# Version I

Schedule from MS Project, 2013-03-25 to 2014-02-25.

## Calendars

- Standard: Mon-Fri 08:00-12:00, 13:00-17:00; Sat-Sun off.

## Schedule

| ID | WBS | Task | Type | Duration | Start | Finish | Predecessors | Total slack | Free slack |
| --- | --- | --- | --- | --- | --- | --- | --- | --- | --- |
| 1 | 1 | **TOTAL PROYECTO** |  | 242d | 2013-03-25 | 2014-02-25 |  | 0d |  |
| 2 | 1.1 | **FASE 1: PREPARACION PARA LA FORMULACION** |  | 31d | 2013-03-25 | 2013-05-06 |  | 0d |  |
| 3 | 1.1.1 | INICIO | milestone | 0d | 2013-03-25 | 2013-03-25 |  | 0d |  |
| 4 | 1.1.2 | TERMINOS DE REFERENCIA. Objetivos. Condicionantes del Promotor |  | 10d | 2013-03-25 | 2013-04-05 | 3 | 5d |  |
| 5 | 1.1.3 | FINANCIACION |  | 7d | 2013-03-25 | 2013-04-02 | 3 | 8d |  |
| 6 | 1.1.4 | COMITÉ DE COORDINACION. Constitución y organización |  | 5d | 2013-03-25 | 2013-03-29 | 3 | 0d |  |
| 7 | 1.1.5 | EQUIPO DE FORMULACION. Recursos humanos y tecnicos |  | 15d | 2013-04-01 | 2013-04-19 | 4SS, 6 | 0d |  |
| 8 | 1.1.6 | METODOLOGIA Y PLAN DE TRABAJO |  | 10d | 2013-04-15 | 2013-04-26 | 4, 5, 6SS, 7FS-5d | 0d |  |
| 9 | 1.1.7 | DOC. Nº1: Fin P.F. |  | 5d | 2013-04-29 | 2013-05-03 | 8 | 0d |  |
| 10 | 1.1.8 | Entrega al PROMOTOR. Doc. Nº1 | milestone | 0d | 2013-05-03 | 2013-05-03 | 9 | 0d |  |
| 11 | 1.1.9 | SEMINARIO DE LANZAMIENTO DEL PROYECTO |  | 1d | 2013-05-06 | 2013-05-06 | 10 | 0d |  |
| 12 | 1.2 | **FASE 2: ANALISIS Y DIAGNOSTICO** |  | 94d | 2013-05-07 | 2013-09-13 |  | 0d |  |
| 13 | 1.2.1 | **ANALISIS ANTECEDENTES** |  | 15d | 2013-05-07 | 2013-05-27 | 11 |  |  |
| 14 | 1.2.1.1 | POLITICAS Y PROGRAMAS |  | 10d | 2013-05-07 | 2013-05-20 | 11 | 5d |  |
| 15 | 1.2.1.2 | MARCO LEGAL |  | 15d | 2013-05-07 | 2013-05-27 | 11 | 0d |  |
| 16 | 1.2.1.3 | BASES DE DATOS EXISTENTES |  | 7d | 2013-05-07 | 2013-05-15 | 11 | 0d |  |
| 17 | 1.2.2 | **ANALISIS DEL AREA DEL PROYECTO** |  | 80d | 2013-05-16 | 2013-09-04 | 11, 16 |  |  |
| 18 | 1.2.2.1 | ANALISIS DE RECURSOS NATURALES. INVENTARIO AMBIENTAL |  | 35d | 2013-05-16 | 2013-07-03 |  | 0d |  |
| 19 | 1.2.2.2 | INFRAESTRUCTURAS Y SERVIVIOS |  | 20d | 2013-07-04 | 2013-07-31 | 18 | 0d |  |
| 20 | 1.2.2.3 | ANALISIS DE SECTORES PRODUCTIVOS |  | 25d | 2013-08-01 | 2013-09-04 | 14, 13, 15, 19 | 0d |  |
| 21 | 1.2.2.4 | ANALISIS POBLACIONAL |  | 20d | 2013-05-16 | 2013-06-12 |  | 60d |  |
| 22 | 1.2.2.5 | SISTEMA GENERAL TERRITORIAL DE INFORMACION |  | 21d | 2013-05-16 | 2013-06-13 | 16 | 0d |  |
| 23 | 1.2.3 | **ANALISIS DE AGENTES Y PARTICIPACION** |  | 82d | 2013-05-23 | 2013-09-13 |  |  |  |
| 24 | 1.2.3.1 | IDENTIFICACION DE AGENTES Y TIPOLOGIA |  | 10d | 2013-05-23 | 2013-06-05 | 22SS+5d | 0d |  |
| 25 | 1.2.3.2 | ANALISIS DE LA PARTICIPACIÓN: ENCUESTA CON LOS AGENTES |  | 60d | 2013-06-06 | 2013-08-28 | 24 | 0d |  |
| 26 | 1.2.3.3 | TALLER DE PARTICIPACIÓN AGENTES PUBLICOS |  | 1d | 2013-06-20 | 2013-06-20 | 25SS+10d | 43d | 0d |
| 27 | 1.2.3.4 | ANALISIS PROSPECTIVO "SIN" |  | 6d | 2013-06-21 | 2013-06-28 | 26 | 43d |  |
| 28 | 1.2.3.5 | INFORME DE PARTICIPACION: Problemas, necesidades, oportunidades |  | 10d | 2013-08-29 | 2013-09-11 | 27, 25 | 0d |  |
| 29 | 1.2.3.6 | PRESENTACIÓN Y VALIDACION DE CONCLUSIONES |  | 2d | 2013-09-12 | 2013-09-13 | 28 | 0d |  |
| 30 | 1.2.4 | CONCLUSIONES Y Doc. Nº2. Presentación al PROMOTOR | milestone | 0d | 2013-09-13 | 2013-09-13 | 29 | 0d |  |
| 31 | 1.2.5 | Doc. Nº2. REVISIÓN POR EL PROMOTOR | milestone | 0d | 2013-09-13 | 2013-09-13 | 29, 30 | 0d |  |

| ID | WBS | Task | Type | Duration | Start | Finish | Predecessors | Total slack | Free slack | Constraint |
| --- | --- | --- | --- | --- | --- | --- | --- | --- | --- | --- |
| 32 | 1.3 | **FASE 3: DISEÑO DEL PROYECTO** |  | 92d | 2013-09-16 | 2014-01-21 |  | 0d |  |  |
| 33 | 1.3.1 | OBJETIVOS Y METAS |  | 1d | 2013-09-16 | 2013-09-16 | 31 | 0d |  |  |
| 34 | 1.3.2 | ALTERNATIVA ESTRATEGICAS: ANÁLISIS Y SELECCIÓN |  | 7d | 2013-09-17 | 2013-09-25 | 33 | 0d |  | finish no earlier than 2013-03-25 |
| 35 | 1.3.3 | FORMULACION DE LOS COMPONENTES |  | 60d | 2013-09-26 | 2013-12-18 | 34 | 0d |  |  |
| 36 | 1.3.4 | DISEÑO DE LA ORGANIZACIÓN |  | 10d | 2013-12-19 | 2014-01-01 | 35 | 0d |  |  |
| 37 | 1.3.5 | SISTEMA DE SEGUIMIENTO Y EVALUACION. Programación de la ejecución |  | 7d | 2014-01-02 | 2014-01-10 | 36, 35 | 32d |  |  |
| 38 | 1.3.6 | PRESUPUESTACION |  | 4d | 2014-01-02 | 2014-01-07 | 35, 36 | 0d |  |  |
| 39 | 1.3.7 | Doc. Nº 3. Entrega al PROMOTOR | milestone | 0d | 2014-01-07 | 2014-01-07 | 38 | 0d |  |  |
| 40 | 1.3.8 | Doc. Nº 3. REVISION POR EL PROMOTOR |  | 10d | 2014-01-08 | 2014-01-21 | 39 | 0d |  |  |
| 41 | 1.4 | **FASE 4: EVALUACION MULTICRITERIO** |  | 15d | 2014-01-22 | 2014-02-11 |  | 0d |  |  |
| 42 | 1.4.1 | EVALUACION ECONOMICO-FINANCIERA |  | 10d | 2014-01-22 | 2014-02-04 | 40 | 0d |  |  |
| 43 | 1.4.2 | EVALUACION SOCIAL Y CULTURAL |  | 10d | 2014-01-22 | 2014-02-04 | 40 | 0d |  |  |
| 44 | 1.4.3 | EVALUACION AMBIENTAL |  | 10d | 2014-01-22 | 2014-02-04 | 40 | 0d |  |  |
| 45 | 1.4.4 | EVALUACION DE RIESGOS, SEGURIDAD Y SALUD DEL PROYECTO |  | 10d | 2014-01-22 | 2014-02-04 | 40 | 15d | 0d |  |
| 46 | 1.4.5 | Entrega Doc. Nº 4. VIABILIDAD Y SOSTENIBILIDAD | milestone | 0d | 2014-02-04 | 2014-02-04 | 45 | 15d |  |  |
| 47 | 1.4.6 | Revisión Doc. Nº 4 |  | 5d | 2014-02-05 | 2014-02-11 | 42, 43, 44 | 0d |  |  |
| 48 | 1.5 | **FASE 5: DOCUMENTACION** |  | 10d | 2014-02-12 | 2014-02-25 |  | 0d |  |  |
| 49 | 1.5.1 | MEMORIA |  | 6d | 2014-02-12 | 2014-02-19 | 47 | 4d |  |  |
| 50 | 1.5.2 | ANEJOS A LA MEMORIA |  | 10d | 2014-02-12 | 2014-02-25 | 47 | 0d |  |  |
| 51 | 1.5.3 | PLANOS |  | 10d | 2014-02-12 | 2014-02-25 | 47 | 0d |  |  |
| 52 | 1.5.4 | PLIEGO DE CONDICIONES |  | 3d | 2014-02-12 | 2014-02-14 | 47 | 7d |  |  |
| 53 | 1.5.5 | PRESUPUESTO |  | 3d | 2014-02-12 | 2014-02-14 | 47 | 7d |  |  |
| 54 | 1.5.6 | ESTUDIO DE SEGURIDAD Y SALUD |  | 10d | 2014-02-12 | 2014-02-25 | 47 | 0d |  |  |
| 55 | 1.5.7 | Entrega del proyecto | milestone | 0d | 2014-02-25 | 2014-02-25 | 54, 49, 50, 51, 52, 53 | 0d |  |  |
